# Softtech PİP Şablonu

Schedule from MS Project, 2016-04-04 to 2019-01-31, costs in TL, A marks actual dates.

## Calendars

- Standard: Mon-Fri 08:00-12:00, 13:00-17:00; Sat-Sun off.

## Resources

| Resource | Rate |
| --- | --- |
| Oktay Ardeniz | 1 |
| Serhat Değirmenci | 1 |
| Medine Yılmaz | 1 |
| Murat Bayram | 1 |
| Tülay Akarsu | 1 |
| Mehmet Emin Kahyatepe | 1 |
| Fazlı Ayan | 1 |
| Gülten Topal | 1 |
| Bilgen Ersoy | 1 |
| Engin Aydoğdu | 1 |
| İLHAN ÖZER | 1 |
| Ali Savran | 1 |
| OYA SÜER | 1 |
| OSMAN DEMİRTAŞ | 1 |
| ORÇUN ŞAKAR | 1 |

## Schedule

| ID | WBS | Task | Type | Duration | Start | Finish | Complete | Remaining | Total slack | Constraint | Resources | Work | Actual work | Cost | Issue Key | Project Key | Issue Priority | Issue Status | Teslimat |
| --- | --- | --- | --- | --- | --- | --- | --- | --- | --- | --- | --- | --- | --- | --- | --- | --- | --- | --- | --- |
| 1 | 1 | **Sedef** |  | 739d? | 2016-04-04 A | 2019-01-31 | 27% | 538.29d? | 0d |  |  | 12416h | 3576.48h | 8,839.52 | P6008-1 | P6008 | Major | Proje Oluşturuldu |  |
| 2 | 1.1 | RPM Geçmiş Kayıtlar |  | 412d? | 2016-04-04 A | 2017-10-31 A | 100% |  |  | finish no earlier than 2017-10-31 |  | 3576.48h | 3576.48h |  | SKIP | P6008 |  |  |  |
| 3 | 1.2 | **Yönetim** |  | 113.13d? | 2018-08-27 | 2019-01-31 |  |  | 0d |  |  | 1193.05h |  | 1,193.05 | SKIP | P6008 |  |  |  |
| 4 | 1.2.1 | Proje Yönetim Faaliyetleri |  | 113.13d? | 2018-08-27 | 2019-01-31 |  |  | 0d | finish no earlier than 2019-01-31 | Serhat Değirmenci | 905.04h |  | 905.04 | P6008-4 | P6008 |  |  | Yönetim |
| 5 | 1.2.2 | Kapsam Belirleme |  | 36d? | 2018-12-12 | 2019-01-31 |  |  | 0d | finish no earlier than 2019-01-31 | Serhat Değirmenci | 288.01h |  | 288.01 | P6008-5 | P6008 |  |  | Kapsam |
| 6 | 1.3 | **Otomatik Swift Oluşturma** |  | 200d? | 2017-11-01 | 2018-08-07 |  |  | 127d |  |  | 3942.48h |  | 3,942.48 | P6008-2 | P6008 |  | PLANLANIYOR |  |
| 7 | 1.3.1 | **Milestones** |  | 131d? | 2017-11-13 | 2018-05-15 |  |  | 188d |  |  |  |  |  | SKIP | P6008 |  |  |  |
| 8 | 1.3.1.1 | İGG | milestone | 0d | 2017-11-13 | 2017-11-13 |  |  | 319d | start no earlier than 2017-11-13 | Serhat Değirmenci |  |  |  | SKIP | P6008 |  |  |  |
| 9 | 1.3.1.2 | TGG | milestone | 0d? | 2017-11-27 | 2017-11-27 |  |  | 309d | start no earlier than 2017-11-27 | Serhat Değirmenci |  |  |  | SKIP | P6008 |  |  |  |
| 10 | 1.3.1.3 | THOGG | milestone | 0d? | 2018-04-02 | 2018-04-02 |  |  | 219d | start no earlier than 2018-04-02 | Serhat Değirmenci |  |  |  | SKIP | P6008 |  |  |  |
| 11 | 1.3.1.4 | ÜHOGG | milestone | 0d? | 2018-05-15 | 2018-05-15 |  |  | 188d | start no earlier than 2018-05-15 | Serhat Değirmenci |  |  |  | SKIP | P6008 |  |  |  |
| 12 | 1.3.2 | **Analiz** |  | 87.25d? | 2017-11-01 | 2018-03-02 |  |  | 239.75d |  |  | 698h |  | 698 | SKIP | P6008 |  |  |  |
| 13 | 1.3.2.1 | Analiz |  | 87.25d? | 2017-11-01 | 2018-03-02 |  |  | 239.75d | start no earlier than 2017-11-01 | ORÇUN ŞAKAR | 698h |  | 698 | P6008-6 | P6008 |  |  | P6008-2 |
| 14 | 1.3.3 | **Geliştirme** |  | 200d? | 2017-11-01 | 2018-08-07 |  |  | 127d |  |  | 2956.48h |  | 2,956.48 | SKIP | P6008 |  |  |  |
| 15 | 1.3.3.1 | Geliştirme |  | 200d? | 2017-11-01 | 2018-08-07 |  |  | 127d | start no earlier than 2017-11-01 | Serhat Değirmenci | 1600h |  | 1,600 | P6008-7 | P6008 |  |  | P6008-2 |
| 16 | 1.3.3.2 | Geliştirme |  | 166.56d? | 2017-11-01 | 2018-06-21 |  |  | 160.44d | start no earlier than 2017-11-01 | Serhat Değirmenci | 1332.48h |  | 1,332.48 | P6008-8 | P6008 |  |  | P6008-2 |
| 17 | 1.3.3.3 | Mimari |  | 3d? | 2017-11-01 | 2017-11-03 |  |  | 324d | start no earlier than 2017-11-01 | Serhat Değirmenci | 24h |  | 24 | P6008-9 | P6008 |  |  | P6008-2 |
| 18 | 1.3.4 | **Test** |  | 36d? | 2018-04-02 | 2018-05-21 |  |  | 183d |  |  | 288h |  | 288 | SKIP | P6008 |  |  |  |
| 19 | 1.3.4.1 | Test |  | 36d? | 2018-04-02 | 2018-05-21 |  |  | 183d | start no earlier than 2018-04-02 | Bilgen Ersoy | 288h |  | 288 | P6008-10 | P6008 |  |  | P6008-2 |
| 20 | 1.3.5 | **Geçiş** |  | 0d? | 2018-06-29 | 2018-06-29 |  |  | 154d |  |  |  |  |  | SKIP | P6008 |  |  |  |
| 21 | 1.3.5.1 | İzleme ve Yaygınlaşma | milestone | 0d? | 2018-06-29 | 2018-06-29 |  |  | 154d | finish no earlier than 2018-06-29 | Serhat Değirmenci |  |  |  | P6008-11 | P6008 |  |  | P6008-2 |
| 22 | 1.4 | **Giden Havale Entegrasyonu** |  | 219d? | 2018-04-02 | 2019-01-31 |  |  | 0d |  |  | 3704h |  | 3,704 | P6008-3 | P6008 |  | PLANLANIYOR |  |
| 23 | 1.4.1 | **Milestones** |  | 102d? | 2018-07-16 | 2018-12-05 |  |  | 42d |  |  |  |  |  | SKIP | P6008 |  |  |  |
| 24 | 1.4.1.1 | İGG | milestone | 0d | 2018-07-16 | 2018-07-16 |  |  | 144d | start no earlier than 2018-07-16 | Serhat Değirmenci |  |  |  | SKIP | P6008 |  |  |  |
| 25 | 1.4.1.2 | TGG | milestone | 0d? | 2018-07-30 | 2018-07-30 |  |  | 134d | start no earlier than 2018-07-30 | Serhat Değirmenci |  |  |  | SKIP | P6008 |  |  |  |
| 26 | 1.4.1.3 | THOGG | milestone | 0d? | 2018-10-15 | 2018-10-15 |  |  | 79d | start no earlier than 2018-10-15 | Serhat Değirmenci |  |  |  | SKIP | P6008 |  |  |  |
| 27 | 1.4.1.4 | ÜHOGG | milestone | 0d? | 2018-12-05 | 2018-12-05 |  |  | 42d | start no earlier than 2018-12-05 | Serhat Değirmenci |  |  |  | SKIP | P6008 |  |  |  |

| ID | WBS | Task | Type | Duration | Start | Finish | Total slack | Constraint | Resources | Work | Cost | Issue Key | Project Key | Teslimat |
| --- | --- | --- | --- | --- | --- | --- | --- | --- | --- | --- | --- | --- | --- | --- |
| 28 | 1.4.2 | **Analiz** |  | 77d? | 2018-06-01 | 2018-09-17 | 98d |  |  | 616h | 616 | SKIP | P6008 |  |
| 29 | 1.4.2.1 | Analiz |  | 77d? | 2018-06-01 | 2018-09-17 | 98d | start no earlier than 2018-06-01 | ORÇUN ŞAKAR | 616h | 616 | P6008-12 | P6008 | P6008-3 |
| 30 | 1.4.3 | **Geliştirme** |  | 200d? | 2018-04-02 | 2019-01-04 | 19d |  |  | 2640h | 2,640 | SKIP | P6008 |  |
| 31 | 1.4.3.1 | Geliştirme |  | 200d? | 2018-04-02 | 2019-01-04 | 19d | start no earlier than 2018-04-02 | Serhat Değirmenci | 1600h | 1,600 | P6008-13 | P6008 | P6008-3 |
| 32 | 1.4.3.2 | Geliştirme |  | 130d? | 2018-04-02 | 2018-09-28 | 89d | start no earlier than 2018-04-02 | Serhat Değirmenci | 1040h | 1,040 | P6008-14 | P6008 | P6008-3 |
| 33 | 1.4.4 | **Test** |  | 56d? | 2018-10-15 | 2018-12-31 | 23d |  |  | 448h | 448 | SKIP | P6008 |  |
| 34 | 1.4.4.1 | Test |  | 56d? | 2018-10-15 | 2018-12-31 | 23d | start no earlier than 2018-10-15 | Bilgen Ersoy | 448h | 448 | P6008-15 | P6008 | P6008-3 |
| 35 | 1.4.5 | **Geçiş** |  | 0d? | 2019-01-31 | 2019-01-31 | 0d |  |  |  |  | SKIP | P6008 |  |
| 36 | 1.4.5.1 | İzleme ve Yaygınlaşma | milestone | 0d? | 2019-01-31 | 2019-01-31 | 0d | finish no earlier than 2019-01-31 | Serhat Değirmenci |  |  | P6008-16 | P6008 | P6008-3 |
